# planning smart

Schedule from MS Project, 2020-04-14 to 2020-05-06, A marks actual dates.

## Calendars

- Standard: Mon-Fri 08:00-12:00, 13:00-17:00; Sat-Sun off. Exceptions (off unless hours are given): 2020-04-20 to 2020-05-03 (Holiday).

## Resources

| Resource |
| --- |
| Maël |
| Alexandre |
| Ludovic |
| Julie |
| Alexane |
| Clément |
| Edouard |

## Schedule

| ID | WBS | Task | Duration | Start | Finish | Complete | Remaining | Total slack | Constraint | Resources | Work | Actual work |
| --- | --- | --- | --- | --- | --- | --- | --- | --- | --- | --- | --- | --- |
| 1 | 1 | **Planning SMART Project** | 6.75d | 2020-04-14 08:00 A | 2020-05-06 15:00 | 34% | 4.44d | 0d |  |  | 272.7h | 62h |
| 2 | 1.1 | **Spécification & SetUp** | 0.88d | 2020-04-14 08:00 A | 2020-04-14 16:00 A | 100% |  |  |  |  | 42h | 42h |
| 3 | 1.1.1 | Spécification des activités | 4h | 2020-04-14 08:00 A | 2020-04-14 12:00 A | 100% |  |  | start no earlier than 2020-04-14 08:00 | Maël | 4h | 4h |
| 4 | 1.1.2 | Recherche des technologies Twitter | 4h | 2020-04-14 08:00 A | 2020-04-14 12:00 A | 100% |  |  | start no earlier than 2020-04-14 08:00 | Alexandre | 4h | 4h |
| 5 | 1.1.3 | Documentation Firebase | 4h | 2020-04-14 08:00 A | 2020-04-14 12:00 A | 100% |  |  | start no earlier than 2020-04-14 08:00 | Ludovic | 4h | 4h |
| 6 | 1.1.4 | Maquettes IHM | 4h | 2020-04-14 08:00 A | 2020-04-14 12:00 A | 100% |  |  | finish no earlier than 2020-04-14 18:00 | Julie | 4h | 4h |
| 7 | 1.1.5 | Recherche des technologies Android | 4h | 2020-04-14 08:00 A | 2020-04-14 12:00 A | 100% |  |  | start no earlier than 2020-04-14 08:00 | Clément | 4h | 4h |
| 8 | 1.1.6 | Recherche des technologie text mining | 0.5d | 2020-04-14 08:00 A | 2020-04-14 12:00 A | 100% |  |  |  | Edouard | 4h | 4h |
| 9 | 1.1.7 | Définition du plan de charges | 4h | 2020-04-14 08:00 A | 2020-04-14 12:00 A | 100% |  |  | finish no earlier than 2020-04-15 17:00 | Alexane | 4h | 4h |
| 10 | 1.1.8 | Set Up Git & API & Android Studio | 2h | 2020-04-14 14:00 A | 2020-04-14 16:00 A | 100% |  |  | finish no earlier than 2020-04-15 18:00 | Alexandre; Alexane; Clément; Edouard; Julie; Ludovic; Maël | 14h | 14h |
| 11 | 1.2 | **Back-end Tasks and Tests** | 3d | 2020-04-15 08:00 A | 2020-04-17 17:00 | 15% | 2.55d | 2.75d |  |  | 116.7h | 12h |
| 12 | 1.2.1 | Authentification Activity without Twitter | 8h | 2020-04-15 08:00 A | 2020-04-15 17:00 | 30% | 5.6h | 4.75d |  | Ludovic; Edouard | 12.7h | 2.4h |
| 13 | 1.2.2 | Authentification Activity without Twitter | 8h | 2020-04-16 08:00 A | 2020-04-16 17:00 | 30% | 5.6h | 3.75d |  | Ludovic; Edouard | 16h | 4.8h |
| 14 | 1.2.3 | Creating account Activity | 8h | 2020-04-17 08:00 A | 2020-04-17 17:00 | 30% | 5.6h | 2.75d |  | Ludovic; Edouard | 16h | 4.8h |
| 15 | 1.2.4 | Make the algorithm of preferences | 4h | 2020-04-15 08:00 | 2020-04-15 12:00 |  |  | 5.25d | start no earlier than 2020-04-15 08:00 | Alexandre; Clément; Maël | 12h |  |
| 16 | 1.2.5 | Getting All Tweets | 14h | 2020-04-15 13:00 | 2020-04-17 10:00 |  |  | 3.5d | start no earlier than 2020-04-15 13:00 | Alexandre; Clément; Maël | 42h |  |
| 17 | 1.2.6 | Filter Tweets by Positivity | 4h | 2020-04-17 10:00 | 2020-04-17 15:00 |  |  | 3d | start no earlier than 2020-04-17 10:00 | Alexandre; Clément; Maël | 12h |  |
| 18 | 1.2.7 | Organise Tweets by categorie | 2h | 2020-04-17 15:00 | 2020-04-17 17:00 |  |  | 2.75d | start no earlier than 2020-04-17 15:00 | Alexandre; Clément; Maël | 6h |  |
| 19 | 1.3 | **Front-end Tasks and Tests** | 2.5d | 2020-04-15 08:00 A | 2020-04-17 12:00 | 27% | 1.82d | 3.25d |  |  | 24h | 8h |
| 20 | 1.3.1 | Handling Android Studio | 2h | 2020-04-15 08:00 A | 2020-04-15 10:00 A | 100% |  |  |  | Julie; Alexane | 4h | 4h |
| 21 | 1.3.2 | Authentification Page | 2h | 2020-04-15 10:00 A | 2020-04-15 12:00 A | 100% |  |  |  | Alexane | 2h | 2h |
| 22 | 1.3.3 | Language Page | 2h | 2020-04-15 10:00 A | 2020-04-15 12:00 A | 100% |  |  | start no earlier than 2020-04-15 10:00 | Julie | 2h | 2h |
| 23 | 1.3.4 | Home Page | 4h | 2020-04-16 08:00 | 2020-04-16 12:00 |  |  | 14.25d | start no earlier than 2020-04-16 08:00 | Julie | 4h |  |
| 24 | 1.3.5 | Sign Up Page | 4h | 2020-04-16 08:00 | 2020-04-16 12:00 |  |  | 14.25d | start no earlier than 2020-04-16 08:00 | Alexane | 4h |  |
| 25 | 1.3.6 | Questionnary Page | 4h | 2020-04-17 08:00 | 2020-04-17 12:00 |  |  | 13.25d | start no earlier than 2020-04-17 08:00 | Julie | 4h |  |
| 26 | 1.3.7 | Parameters Page | 4h | 2020-04-17 08:00 | 2020-04-17 12:00 |  |  | 3.25d | start no earlier than 2020-04-17 08:00 | Alexane | 4h |  |

| ID | WBS | Task | Type | Duration | Start | Finish | Total slack | Constraint | Resources | Work |
| --- | --- | --- | --- | --- | --- | --- | --- | --- | --- | --- |
| 27 | 1.4 | **Integration Tasks and Tests** |  | 0.5d | 2020-05-04 08:00 | 2020-05-04 12:00 | 2.25d |  |  | 22h |
| 28 | 1.4.1 | Integration Authentification |  | 2h | 2020-05-04 08:00 | 2020-05-04 10:00 | 2.5d | start no earlier than 2020-05-04 08:00 | Ludovic; Edouard; Alexane | 6h |
| 29 | 1.4.2 | Integration Getting Tweets |  | 4h | 2020-05-04 08:00 | 2020-05-04 12:00 | 2.25d | start no earlier than 2020-05-04 08:00 | Julie; Alexandre; Clément; Maël | 16h |
| 30 | 1.5 | **Alarm Activities** |  | 0.5d | 2020-05-05 08:00 | 2020-05-05 12:00 | 1.25d |  |  | 26h |
| 31 | 1.5.1 | Back-end planify alarm |  | 4h | 2020-05-05 08:00 | 2020-05-05 12:00 | 1.25d | start no earlier than 2020-05-05 08:00 | Ludovic; Clément; Maël | 12h |
| 32 | 1.5.2 | Back-end vocal voice alarm |  | 4h | 2020-05-05 08:00 | 2020-05-05 12:00 | 1.25d | start no earlier than 2020-05-05 08:00 | Alexandre; Edouard | 8h |
| 33 | 1.5.3 | Front-end Planify alarm |  | 2h | 2020-05-05 08:00 | 2020-05-05 10:00 | 1.5d | start no earlier than 2020-05-05 08:00 | Julie | 2h |
| 34 | 1.5.4 | Front-end notification alarm |  | 4h | 2020-05-05 08:00 | 2020-05-05 12:00 | 1.25d | start no earlier than 2020-05-05 08:00 | Alexane | 4h |
| 35 | 1.6 | Final Tests & Preparing Presentation | manual | 6h | 2020-05-06 08:00 | 2020-05-06 15:00 |  |  | Alexandre; Alexane; Clément; Edouard; Julie; Ludovic; Maël | 42h |
